# Dynaslope2018

Schedule from ProjectLibre, 2018-02-08 to 2018-09-03.

## Calendars

- Standard: Mon-Fri 08:00-12:00, 13:00-17:00; Sat-Sun off. Exceptions (off unless hours are given): 2018-02-08, 2018-02-16, 2018-03-05 to 2018-03-09, 2018-03-29 to 2018-03-30, 2018-04-02 to 2018-04-06, 2018-04-09, 2018-05-01, 2018-05-07 to 2018-05-11, 2018-06-04 to 2018-06-07, 2018-06-12, 2018-07-02 to 2018-07-06, 2018-08-06 to 2018-08-10, 2018-08-21, 2018-08-27, 2018-09-03.

## Resources

| Resource |
| --- |
| Unassigned |
| geotech 1 |
| geotech 2 |
| geotech 3 |
| geol 1 |
| geol 2 |
| geol 3 |
| geol 4 |
| geol 5 |
| data scientist 1 |
| data scientist 2 |
| data scientist 3 |
| data scientist 4 |
| data scientist 5 |
| data scientist 6 |
| data scientist 7 |
| social scientist 1 |
| social scientist 2 |
| DRRS 1 |
| Surveyor 1 |
| geol 6 |
| geol 7 |
| geol 8 |
| social scientist 3 |
| DRRS 2 |
| comm res 1 |
| comm res 2 |
| web dev 1 |
| emb engr 1 |
| emb engr 2 |
| emb engr 3 |
| emb engr 4 |
| emb engr 5 |
| emb engr 6 |
| emb engr 7 |
| sys ad 1 |
| sys ad 2 |
| web dev 2 |
| web dev 3 |
| web dev 4 |
| web dev 5 |
| programmer 1 |
| programmer 2 |
| programmer 3 |
| programmer 4 |
| emb engr 8 |
| emb engr 9 |
| data scientist 8 |
| analyst 1 |
| analyst 2 |
| analyst 3 |
| analyst 4 |
| MEAL officer 1 |
| MEAL officer 2 |
| MEAL officer 3 |
| MEAL officer 4 |
| MEAL officer 5 |
| MEAL officer 6 |
| MEAL staff 1 |
| MEAL staff 2 |
| MEAL staff 3 |
| MEAL staff 4 |
| MEAL staff 5 |
| MEAL staff 6 |
| MEAL staff 7 |
| MEAL staff 8 |
| MEAL staff 9 |
| MEAL staff 10 |
| MEAL staff 11 |
| MEAL staff 12 |
| comm dev 1 |
| comm dev 2 |
| comm dev 3 |
| comm dev 4 |
| facilitator 1 |
| facilitator 2 |
| facilitator 3 |
| social scientist 3 |
| social scientist 4 |
| monitoringPersonnel40+ |
| eletech 1 |
| eletech 2 |
| eletech 3 |
| eletech 4 |
| eletech 5 |
| emb engr 8 |
| emb engr 9 |
| programmer 5 |
| programmer 6 |
| training specialist 1 |
| training specialist 2 |
| training specialist 3 |
| training specialist 4 |
| MEAL expert |
| technical writer 1 |
| technical writer 2 |
| technical writer 3 |
| full stack dev 1 |
| full stack dev 2 |

## Schedule

| ID | WBS | Task | Duration | Start | Finish | Predecessors | Total slack | Constraint | Resources |
| --- | --- | --- | --- | --- | --- | --- | --- | --- | --- |
| 1 | 1 | **Landslide risk information** | 112d? | 2018-03-21 | 2018-09-03 |  |  |  |  |
| 2 | 1.1 | **methods report (Hazards)** | 71d? | 2018-05-23 | 2018-09-03 |  |  |  |  |
| 3 | 1.1.1 | MoMs | 1d? | 2018-09-03 | 2018-09-03 |  | 13900d | as late as possible |  |
| 4 | 1.1.2 | study surficial displacement behaviour | 1d? | 2018-09-03 | 2018-09-03 |  | 13900d | as late as possible |  |
| 5 | 1.1.3 | **slope stability models (FEM)** | 49d | 2018-06-25 | 2018-09-03 |  |  |  |  |
| 6 | 1.1.3.1 | review related literature | 10d | 2018-06-25 | 2018-07-06 |  | 9100d | as late as possible | geotech 1 |
| 7 | 1.1.3.2 | develop prototype | 5d | 2018-07-09 | 2018-07-13 | 6 |  | as late as possible | geotech 1 |
| 8 | 1.1.3.3 | test model with monitoring data | 20d | 2018-07-16 | 2018-08-10 | 7 |  | as late as possible | geotech 1 |
| 9 | 1.1.3.4 | field data gathering | 15d | 2018-07-23 | 2018-08-10 | 7 | 500d | as late as possible | geol 1; geotech 1 |
| 10 | 1.1.3.5 | evaluate model (report as PI of slope stab model) | 4d | 2018-08-13 | 2018-08-16 | 8, 9 |  | as late as possible | geotech 1 |
| 11 | 1.1.3.6 | write report | 5d | 2018-08-17 | 2018-08-24 | 10 |  | as late as possible | geotech 1 |
| 12 | 1.1.3.7 | develop training materials | 3d | 2018-08-28 | 2018-08-30 | 11 |  | as late as possible | geotech 1 |
| 13 | 1.1.3.8 | conduct training | 2d | 2018-08-31 | 2018-09-03 | 12 |  | as late as possible | geotech 1 |
| 14 | 1.1.4 | **slope stability models (LEM1)** | 28d | 2018-07-24 | 2018-09-03 |  |  |  |  |
| 15 | 1.1.4.1 | review related literature | 5d | 2018-07-24 | 2018-07-30 |  | 11200d | as late as possible | geotech 2 |
| 16 | 1.1.4.2 | develop prototype | 5d | 2018-07-31 | 2018-08-06 | 15 |  | as late as possible | geotech 2 |
| 17 | 1.1.4.3 | test model with monitoring data | 5d | 2018-08-07 | 2018-08-13 | 16, 213 |  | as late as possible | geotech 2 |
| 18 | 1.1.4.4 | field data gathering | 15d | 2018-08-10 | 2018-09-03 | 16 | 300d | as late as possible | geol 2; geotech 2 |
| 19 | 1.1.4.5 | evaluate model (report as PI of slope stab model) | 3d | 2018-08-14 | 2018-08-16 | 17 |  | as late as possible | geotech 2 |
| 20 | 1.1.4.6 | write report | 5d | 2018-08-17 | 2018-08-24 | 19 |  | as late as possible | geotech 2 |
| 21 | 1.1.4.7 | develop training materials | 3d | 2018-08-28 | 2018-08-30 | 20 |  | as late as possible | geotech 2 |
| 22 | 1.1.4.8 | conduct training | 2d | 2018-08-31 | 2018-09-03 | 21 |  | as late as possible | geotech 2 |
| 23 | 1.1.5 | **slope stability models (LEM2)** | 28d | 2018-07-24 | 2018-09-03 |  |  |  |  |
| 24 | 1.1.5.1 | review related literature | 5d | 2018-07-24 | 2018-07-30 |  | 11200d | as late as possible | geotech 3 |
| 25 | 1.1.5.2 | develop prototype | 5d | 2018-07-31 | 2018-08-06 | 24 |  | as late as possible | geotech 3 |
| 26 | 1.1.5.3 | test model with monitoring data | 5d | 2018-08-07 | 2018-08-13 | 25, 213 |  | as late as possible | geotech 3 |
| 27 | 1.1.5.4 | field data gathering | 15d | 2018-08-10 | 2018-09-03 | 25 | 300d | as late as possible | geol 3; geotech 3 |
| 28 | 1.1.5.5 | evaluate model (report as PI of slope stab model) | 3d | 2018-08-14 | 2018-08-16 | 26 |  | as late as possible | geotech 3 |
| 29 | 1.1.5.6 | write report | 5d | 2018-08-17 | 2018-08-24 | 28 |  | as late as possible | geotech 3 |
| 30 | 1.1.5.7 | develop training materials | 3d | 2018-08-28 | 2018-08-30 | 29 |  | as late as possible | geotech 3 |
| 31 | 1.1.5.8 | conduct training | 2d | 2018-08-31 | 2018-09-03 | 30 |  | as late as possible | geotech 3 |

| ID | WBS | Task | Duration | Start | Finish | Predecessors | Total slack | Constraint | Resources |
| --- | --- | --- | --- | --- | --- | --- | --- | --- | --- |
| 32 | 1.1.6 | **runout model 1** | 38d | 2018-07-10 | 2018-09-03 |  |  |  |  |
| 33 | 1.1.6.1 | review related literature | 10d | 2018-07-10 | 2018-07-23 |  | 10200d | as late as possible |  |
| 34 | 1.1.6.2 | develop prototype | 10d | 2018-07-24 | 2018-08-06 | 33 |  | as late as possible | geol 4 |
| 35 | 1.1.6.3 | test model with monitoring data | 5d | 2018-08-07 | 2018-08-13 | 34, 213 |  | as late as possible | geol 4 |
| 36 | 1.1.6.4 | evaluate model (report as PI of runout model) | 3d | 2018-08-14 | 2018-08-16 | 35 |  | as late as possible | geol 4 |
| 37 | 1.1.6.5 | write report | 5d | 2018-08-17 | 2018-08-24 | 36 |  | as late as possible | geol 4 |
| 38 | 1.1.6.6 | develop training materials | 3d | 2018-08-28 | 2018-08-30 | 37 |  | as late as possible | geol 4 |
| 39 | 1.1.6.7 | conduct training | 2d | 2018-08-31 | 2018-09-03 | 38 |  | as late as possible | geol 4 |
| 40 | 1.1.7 | **runout model 2** | 33d | 2018-07-17 | 2018-09-03 |  |  |  |  |
| 41 | 1.1.7.1 | review related literature | 5d | 2018-07-17 | 2018-07-23 |  | 10700d | as late as possible |  |
| 42 | 1.1.7.2 | develop prototype | 10d | 2018-07-24 | 2018-08-06 | 41 |  | as late as possible | geol 5 |
| 43 | 1.1.7.3 | test model with monitoring data | 5d | 2018-08-07 | 2018-08-13 | 42, 213 |  | as late as possible | geol 5 |
| 44 | 1.1.7.4 | evaluate model (report as PI of runout model) | 3d | 2018-08-14 | 2018-08-16 | 43 |  | as late as possible | geol 5 |
| 45 | 1.1.7.5 | write report | 5d | 2018-08-17 | 2018-08-24 | 44 |  | as late as possible | geol 5 |
| 46 | 1.1.7.6 | develop training materials | 3d | 2018-08-28 | 2018-08-30 | 45 |  | as late as possible | geol 5 |
| 47 | 1.1.7.7 | conduct training | 2d | 2018-08-31 | 2018-09-03 | 46 |  | as late as possible | geol 5 |
| 48 | 1.1.8 | **threshold model 1** | 42d | 2018-05-23 | 2018-07-20 |  |  |  |  |
| 49 | 1.1.8.1 | review related literature | 5d | 2018-05-23 | 2018-05-29 |  | 6900d | as late as possible | data scientist 1 |
| 50 | 1.1.8.2 | develop prototype | 20d | 2018-05-30 | 2018-06-27 | 49 |  | as late as possible | data scientist 1 |
| 51 | 1.1.8.3 | implement model alongside operations | 10d | 2018-06-28 | 2018-07-11 | 50, 213 |  | as late as possible | data scientist 1 |
| 52 | 1.1.8.4 | evaluate model (report as PI of threshold model) | 1d | 2018-07-12 | 2018-07-12 | 51, 96 |  | as late as possible | data scientist 1 |
| 53 | 1.1.8.5 | write report | 4d | 2018-07-13 | 2018-07-18 | 52 |  | as late as possible | data scientist 1 |
| 54 | 1.1.8.6 | develop training materials | 1d | 2018-07-19 | 2018-07-19 | 53 |  | as late as possible | data scientist 1 |
| 55 | 1.1.8.7 | conduct training | 1d | 2018-07-20 | 2018-07-20 | 54 |  | as late as possible | data scientist 1 |

| ID | WBS | Task | Duration | Start | Finish | Predecessors | Total slack | Constraint | Resources |
| --- | --- | --- | --- | --- | --- | --- | --- | --- | --- |
| 56 | 1.1.9 | **threshold model 2** | 42d | 2018-05-23 | 2018-07-20 |  |  |  |  |
| 57 | 1.1.9.1 | review related literature | 5d | 2018-05-23 | 2018-05-29 |  | 6900d | as late as possible | data scientist 2 |
| 58 | 1.1.9.2 | develop prototype | 20d | 2018-05-30 | 2018-06-27 | 57 |  | as late as possible | data scientist 2 |
| 59 | 1.1.9.3 | implement model alongside operations | 10d | 2018-06-28 | 2018-07-11 | 58, 213 |  | as late as possible | data scientist 2 |
| 60 | 1.1.9.4 | evaluate model (report as PI of threshold model) | 1d | 2018-07-12 | 2018-07-12 | 59, 96 |  | as late as possible | data scientist 2 |
| 61 | 1.1.9.5 | write report | 4d | 2018-07-13 | 2018-07-18 | 60 |  | as late as possible | data scientist 2 |
| 62 | 1.1.9.6 | develop training materials | 1d | 2018-07-19 | 2018-07-19 | 61 |  | as late as possible | data scientist 2 |
| 63 | 1.1.9.7 | conduct training | 1d | 2018-07-20 | 2018-07-20 | 62 |  | as late as possible | data scientist 2 |
| 64 | 1.1.10 | **threshold model 3** | 42d | 2018-05-23 | 2018-07-20 |  |  |  |  |
| 65 | 1.1.10.1 | review related literature | 5d | 2018-05-23 | 2018-05-29 |  | 6900d | as late as possible | data scientist 3 |
| 66 | 1.1.10.2 | develop prototype | 20d | 2018-05-30 | 2018-06-27 | 65 |  | as late as possible | data scientist 3 |
| 67 | 1.1.10.3 | implement model alongside operations | 10d | 2018-06-28 | 2018-07-11 | 66, 213 |  | as late as possible | data scientist 3 |
| 68 | 1.1.10.4 | evaluate model (report as PI of threshold model) | 1d | 2018-07-12 | 2018-07-12 | 67, 96 |  | as late as possible | data scientist 3 |
| 69 | 1.1.10.5 | write report | 4d | 2018-07-13 | 2018-07-18 | 68 |  | as late as possible | data scientist 3 |
| 70 | 1.1.10.6 | develop training materials | 1d | 2018-07-19 | 2018-07-19 | 69 |  | as late as possible | data scientist 3 |
| 71 | 1.1.10.7 | conduct training | 1d | 2018-07-20 | 2018-07-20 | 70 |  | as late as possible | data scientist 3 |
| 72 | 1.1.11 | **threshold model 4** | 42d | 2018-05-23 | 2018-07-20 |  |  |  |  |
| 73 | 1.1.11.1 | review related literature | 5d | 2018-05-23 | 2018-05-29 |  | 6900d | as late as possible | data scientist 4 |
| 74 | 1.1.11.2 | develop prototype | 20d | 2018-05-30 | 2018-06-27 | 73 |  | as late as possible | data scientist 4 |
| 75 | 1.1.11.3 | implement model alongside operations | 10d | 2018-06-28 | 2018-07-11 | 213, 74 |  | as late as possible | data scientist 4 |
| 76 | 1.1.11.4 | evaluate model (report as PI of threshold model) | 1d | 2018-07-12 | 2018-07-12 | 96, 75 |  | as late as possible | data scientist 4 |
| 77 | 1.1.11.5 | write report | 4d | 2018-07-13 | 2018-07-18 | 76 |  | as late as possible | data scientist 4 |
| 78 | 1.1.11.6 | develop training materials | 1d | 2018-07-19 | 2018-07-19 | 77 |  | as late as possible | data scientist 4 |
| 79 | 1.1.11.7 | conduct training | 1d | 2018-07-20 | 2018-07-20 | 78 |  | as late as possible | data scientist 4 |

| ID | WBS | Task | Duration | Start | Finish | Predecessors | Total slack | Constraint | Resources |
| --- | --- | --- | --- | --- | --- | --- | --- | --- | --- |
| 80 | 1.1.12 | **threshold model 5** | 42d | 2018-05-23 | 2018-07-20 |  |  |  |  |
| 81 | 1.1.12.1 | review related literature | 5d | 2018-05-23 | 2018-05-29 |  | 6900d | as late as possible | data scientist 5 |
| 82 | 1.1.12.2 | develop prototype | 20d | 2018-05-30 | 2018-06-27 | 81 |  | as late as possible | data scientist 5 |
| 83 | 1.1.12.3 | implement model alongside operations | 10d | 2018-06-28 | 2018-07-11 | 82, 213 |  | as late as possible | data scientist 5 |
| 84 | 1.1.12.4 | evaluate model (report as PI of threshold model) | 1d | 2018-07-12 | 2018-07-12 | 83, 96 |  | as late as possible | data scientist 5 |
| 85 | 1.1.12.5 | write report | 4d | 2018-07-13 | 2018-07-18 | 84 |  | as late as possible | data scientist 5 |
| 86 | 1.1.12.6 | develop training materials | 1d | 2018-07-19 | 2018-07-19 | 85 |  | as late as possible | data scientist 5 |
| 87 | 1.1.12.7 | conduct training | 1d | 2018-07-20 | 2018-07-20 | 86 |  | as late as possible | data scientist 5 |
| 88 | 1.1.13 | **threshold model 6** | 42d | 2018-05-23 | 2018-07-20 |  |  |  |  |
| 89 | 1.1.13.1 | review related literature | 5d | 2018-05-23 | 2018-05-29 |  | 6900d | as late as possible | data scientist 6 |
| 90 | 1.1.13.2 | develop prototype | 20d | 2018-05-30 | 2018-06-27 | 89 |  | as late as possible | data scientist 6 |
| 91 | 1.1.13.3 | implement model alongside operations | 10d | 2018-06-28 | 2018-07-11 | 90, 213 |  | as late as possible | data scientist 6 |
| 92 | 1.1.13.4 | evaluate model (report as PI of threshold model) | 1d | 2018-07-12 | 2018-07-12 | 91, 96 |  | as late as possible | data scientist 6 |
| 93 | 1.1.13.5 | write report | 4d | 2018-07-13 | 2018-07-18 | 92 |  | as late as possible | data scientist 6 |
| 94 | 1.1.13.6 | develop training materials | 1d | 2018-07-19 | 2018-07-19 | 93 |  | as late as possible | data scientist 6 |
| 95 | 1.1.13.7 | conduct training | 1d | 2018-07-20 | 2018-07-20 | 94 |  | as late as possible | data scientist 6 |
| 96 | 1.1.14 | develop threshold performance index | 20d | 2018-06-14 | 2018-07-11 |  | 8400d | as late as possible | data scientist 7 |
| 97 | 1.2 | **methods report (C&V)** | 65d | 2018-05-31 | 2018-09-03 |  |  |  |  |
| 98 | 1.2.1 | **method 1** | 65d | 2018-05-31 | 2018-09-03 |  |  |  |  |
| 99 | 1.2.1.1 | evaluate C&V frameworks (explore REDAS as one of the frameworks/models) | 20d | 2018-05-31 | 2018-06-28 |  | 7500d | as late as possible | social scientist 1 |
| 100 | 1.2.1.2 | development of C&V assessment modules | 20d | 2018-06-29 | 2018-07-26 | 99 |  | as late as possible | social scientist 1 |
| 101 | 1.2.1.3 | recommend C&V info system | 5d | 2018-08-28 | 2018-09-03 | 100 | 2000d | as late as possible | social scientist 1 |
| 102 | 1.2.1.4 | design database (linking to EWSL data storage and management)) | 5d | 2018-08-23 | 2018-08-30 | 99 | 3800d | as late as possible | social scientist 1 |
| 103 | 1.2.1.5 | write report | 2d | 2018-08-31 | 2018-09-03 | 102 |  | as late as possible | social scientist 1 |
| 104 | 1.2.1.6 | develop training materials | 20d | 2018-07-27 | 2018-08-24 | 100 |  | as late as possible | social scientist 1 |
| 105 | 1.2.1.7 | conduct training | 5d | 2018-08-28 | 2018-09-03 | 104 |  | as late as possible | social scientist 1 |

| ID | WBS | Task | Duration | Start | Finish | Predecessors | Total slack | Constraint | Resources |
| --- | --- | --- | --- | --- | --- | --- | --- | --- | --- |
| 106 | 1.2.2 | **method 2** | 65d | 2018-05-31 | 2018-09-03 |  |  |  |  |
| 107 | 1.2.2.1 | evaluate C&V frameworks (explore REDAS as one of the frameworks/models) | 20d | 2018-05-31 | 2018-06-28 |  | 7500d | as late as possible | social scientist 2 |
| 108 | 1.2.2.2 | development of C&V assessment modules | 20d | 2018-06-29 | 2018-07-26 | 107 |  | as late as possible | social scientist 2 |
| 109 | 1.2.2.3 | recommend C&V info system | 5d | 2018-08-28 | 2018-09-03 | 108 | 2000d | as late as possible | social scientist 2 |
| 110 | 1.2.2.4 | design database (linking to EWSL data storage and management)) | 5d | 2018-08-23 | 2018-08-30 | 107 | 3800d | as late as possible | social scientist 2 |
| 111 | 1.2.2.5 | write report | 2d | 2018-08-31 | 2018-09-03 | 110 |  | as late as possible | social scientist 2 |
| 112 | 1.2.2.6 | develop training materials | 20d | 2018-07-27 | 2018-08-24 | 108 |  | as late as possible | social scientist 2 |
| 113 | 1.2.2.7 | conduct training | 5d | 2018-08-28 | 2018-09-03 | 112 |  | as late as possible | social scientist 2 |
| 114 | 1.3 | **methods report (Risk)** | 112d | 2018-03-21 | 2018-09-03 |  |  |  |  |
| 115 | 1.3.1 | evaluate frameworks for risk | 20d | 2018-03-21 | 2018-04-20 |  | 2800d | as late as possible | DRRS 1 |
| 116 | 1.3.2 | develop methods | 20d | 2018-04-23 | 2018-05-21 | 115 |  | as late as possible | DRRS 1 |
| 117 | 1.3.3 | write report | 2d | 2018-05-22 | 2018-05-23 | 116 |  | as late as possible | DRRS 1 |
| 118 | 1.3.4 | develop training materials | 10d | 2018-05-24 | 2018-06-06 | 117 |  | as late as possible | DRRS 1 |
| 119 | 1.3.5 | conduct training (NC 3) | 60d | 2018-06-07 | 2018-09-03 | 118 |  | as late as possible | DRRS 1 |
| 120 | 1.4 | **per site landslide risk reports (focus sites)** | 55d? | 2018-06-15 | 2018-09-03 |  |  |  |  |
| 121 | 1.4.1 | integration of hazard, capacity, and vulnerability information | 15d | 2018-08-10 | 2018-09-03 | 116, 130, 134 |  | as late as possible | DRRS 1 |
| 122 | 1.4.2 | **per site hazard reports (all sites)** | 34d? | 2018-06-25 | 2018-08-09 |  |  |  |  |
| 123 | 1.4.2.1 | conduct fieldwork (resurvey) | 30d | 2018-06-25 | 2018-08-03 |  | 9100d | as late as possible | geol 6 |
| 124 | 1.4.2.2 | consolidate field notes | 1d? | 2018-08-06 | 2018-08-06 | 123 |  | as late as possible | geol 6 |
| 125 | 1.4.2.3 | review and identify active sites | 1d? | 2018-08-03 | 2018-08-03 |  | 12000d | as late as possible | geol 6 |
| 126 | 1.4.2.4 | conduct quarterly survey (RTS/RTK/remap) | 1d? | 2018-08-06 | 2018-08-06 | 125 |  | as late as possible | Surveyor 1 |
| 127 | 1.4.2.5 | analyze monitoring data (requires access to database) | 1d? | 2018-08-07 | 2018-08-07 | 124, 126 |  | as late as possible | geol 6 |
| 128 | 1.4.2.6 | update volume, depth, extent (using current models) | 1d? | 2018-08-08 | 2018-08-08 | 127 |  | as late as possible | geol 6 |
| 129 | 1.4.2.7 | update thresholds with monitoring data and performance index | 1d? | 2018-08-08 | 2018-08-08 |  | 12300d | as late as possible | geol 6 |
| 130 | 1.4.2.8 | update per site hazard reports (updated maps as PI) | 1d? | 2018-08-09 | 2018-08-09 | 129, 128 |  | as late as possible | geol 6 |

| ID | WBS | Task | Duration | Start | Finish | Predecessors | Total slack | Constraint | Resources |
| --- | --- | --- | --- | --- | --- | --- | --- | --- | --- |
| 131 | 1.4.3 | **per site capacity and vulnerability reports (2 focus sites, Mindanao)** | 40d | 2018-06-15 | 2018-08-09 |  |  |  |  |
| 132 | 1.4.3.1 | conduct data gathering | 15d | 2018-06-15 | 2018-07-05 |  | 8500d | as late as possible | social scientist 3 |
| 133 | 1.4.3.2 | analyze data | 20d | 2018-07-06 | 2018-08-02 | 132 |  | as late as possible | social scientist 3 |
| 134 | 1.4.3.3 | update per site capacity and vulnerability reports | 5d | 2018-08-03 | 2018-08-09 | 133 |  | as late as possible | social scientist 3 |
| 135 | 1.5 | **"Alert protocol" -- essentually how risk knowledge informs early warning practice** | 42d | 2018-07-02 | 2018-08-30 |  |  |  |  |
| 136 | 1.5.1 | review of related literature | 20d | 2018-07-02 | 2018-07-27 |  | 9600d | as late as possible | DRRS 2 |
| 137 | 1.5.2 | review and evaluate current alert protocol | 20d | 2018-07-30 | 2018-08-28 | 136 |  | as late as possible | DRRS 2 |
| 138 | 1.5.3 | recomend alert protocol | 2d | 2018-08-29 | 2018-08-30 | 137 |  | as late as possible | DRRS 2 |
| 139 | 2 | **Early warning system for landslides** | 140d? | 2018-02-08 | 2018-09-03 |  |  |  |  |
| 140 | 2.1 | **Data gathering system** | 140d | 2018-02-08 | 2018-09-03 |  |  |  |  |
| 141 | 2.1.1 | **community reported data** | 140d | 2018-02-08 | 2018-09-03 |  |  |  |  |
| 142 | 2.1.1.1 | provide initial performance metrics based on 2017 experience | 1d | 2018-02-08 | 2018-02-08 |  | 13600d |  |  |
| 143 | 2.1.1.2 | improve means of gathering surficial data (including transmission) | 40d | 2018-07-06 | 2018-09-03 | 257 | 8000d | as late as possible |  |
| 144 | 2.1.1.3 | develop on the ground validation of rainfall via sensors | 40d | 2018-07-06 | 2018-09-03 |  | 10000d | as late as possible |  |
| 145 | 2.1.2 | **tilt** | 140d | 2018-02-08 | 2018-09-03 |  |  |  |  |
| 146 | 2.1.2.1 | provide initial performance metrics based on 2017 experience | 1d | 2018-02-08 | 2018-02-08 |  | 13600d |  |  |
| 147 | 2.1.2.2 | characterize tilt sensor(angle range and accuracy of v3 tilt sensor) | 10d | 2018-02-08 | 2018-02-22 |  | 13000d |  | emb engr 1 |
| 148 | 2.1.2.3 | develop tilt sensor feature 1(improve angle range, accuracy,packaging,coms) | 20d | 2018-02-08 | 2018-03-08 |  | 12000d |  |  |
| 149 | 2.1.2.4 | develop tilt sensor feature 2(improve angle range, accuracy,packaging,coms) | 20d | 2018-02-08 | 2018-03-08 |  | 12000d |  |  |
| 150 | 2.1.2.5 | prepare manufacturing documents (project to phivolcs --admin heavy task ito) | 20d | 2018-02-08 | 2018-03-08 |  | 12000d |  |  |
| 151 | 2.1.2.6 | **manufacturing monitoring** | 140d | 2018-02-08 | 2018-09-03 |  |  |  |  |
| 152 | 2.1.2.6.1 | develop functionality tests | 10d | 2018-02-08 | 2018-02-22 |  |  |  |  |
| 153 | 2.1.2.6.2 | manufacture | 120d | 2018-02-23 | 2018-08-16 | 152 |  |  |  |
| 154 | 2.1.2.6.3 | troubleshoot manufacturing issues | 120d | 2018-02-23 | 2018-08-16 | 152 | 1000d |  |  |
| 155 | 2.1.2.6.4 | evaluate sample boards | 10d | 2018-08-17 | 2018-09-03 | 153 |  |  |  |
| 156 | 2.1.2.7 | develop and implement filters | 8d | 2018-02-08 | 2018-02-20 |  | 13200d |  |  |
| 157 | 2.1.2.8 | deployment of new tilt sensors | 5d | 2018-02-08 | 2018-02-14 |  | 13500d |  |  |

Notes:
- 135: trigger to alert + alert to dissemination
- 140: every product should have performance metrics included in its PI PI should include documentation per product
- 151: Fractional

| ID | WBS | Task | Duration | Start | Finish | Predecessors | Total slack | Constraint | Resources |
| --- | --- | --- | --- | --- | --- | --- | --- | --- | --- |
| 158 | 2.1.3 | **soms** | 58d | 2018-02-08 | 2018-05-07 |  | 8200d |  |  |
| 159 | 2.1.3.1 | provide initial performance metrics based on 2017 experience | 1d | 2018-02-08 | 2018-02-08 |  | 13600d |  |  |
| 160 | 2.1.3.2 | soms characterization 1 (gravimetric site-specific) | 20d | 2018-02-08 | 2018-03-08 |  | 12000d |  |  |
| 161 | 2.1.3.3 | soms characterization 2 (borehole infiltration versus non-borehole infiltration) | 10d | 2018-02-08 | 2018-02-22 |  | 13000d |  |  |
| 162 | 2.1.3.4 | soms characterization 3 (rainfall-soil moisture correlation with visual water infiltration) | 5d | 2018-02-08 | 2018-02-14 |  | 13500d |  |  |
| 163 | 2.1.3.5 | improve soms probe and its orientation | 20d | 2018-02-08 | 2018-03-08 |  | 8200d |  |  |
| 164 | 2.1.3.6 | develop new soil moisture sensor (improve accuracy, packaging, coms) prototype | 20d | 2018-03-09 | 2018-04-10 | 163 | 8200d |  |  |
| 165 | 2.1.3.7 | deploy new soms | 5d | 2018-04-11 | 2018-04-17 | 164 | 8200d |  |  |
| 166 | 2.1.3.8 | develop filter | 8d | 2018-04-18 | 2018-04-27 | 165 | 8200d |  |  |
| 167 | 2.1.3.9 | implement filter | 5d | 2018-04-30 | 2018-05-07 | 166 | 8200d |  |  |
| 168 | 2.1.4 | **uts-ext** | 140d | 2018-02-08 | 2018-09-03 |  |  |  |  |
| 169 | 2.1.4.1 | provide initial performance metrics based on 2017 experience | 1d | 2018-02-08 | 2018-02-08 |  | 13600d |  |  |
| 170 | 2.1.4.2 | char-dev-dep | 80d | 2018-03-09 | 2018-07-05 |  | 2000d | as late as possible | emb engr 3 |
| 171 | 2.1.4.3 | develop filter | 30d | 2018-07-06 | 2018-08-16 | 170 |  | as late as possible | emb engr 3 |
| 172 | 2.1.4.4 | implement filter | 10d | 2018-08-17 | 2018-09-03 | 171 |  | as late as possible | emb engr 3 |
| 173 | 2.1.5 | **lidar-ext** | 140d | 2018-02-08 | 2018-09-03 |  |  |  |  |
| 174 | 2.1.5.1 | provide initial performance metrics based on 2017 experience | 1d | 2018-02-08 | 2018-02-08 |  | 13600d |  |  |
| 175 | 2.1.5.2 | char-dev-dep | 80d | 2018-03-09 | 2018-07-05 |  | 2000d | as late as possible | emb engr 4 |
| 176 | 2.1.5.3 | develop filter | 30d | 2018-07-06 | 2018-08-16 | 175 |  | as late as possible | emb engr 4 |
| 177 | 2.1.5.4 | implement filter | 10d | 2018-08-17 | 2018-09-03 | 176 |  | as late as possible | emb engr 4 |
| 178 | 2.1.6 | **rain gauge** | 140d | 2018-02-08 | 2018-09-03 |  |  |  |  |
| 179 | 2.1.6.1 | provide initial performance metrics based on 2017 experience | 1d | 2018-02-08 | 2018-02-08 |  | 13600d |  |  |
| 180 | 2.1.6.2 | char-dev-dep | 40d | 2018-06-07 | 2018-08-02 |  | 8000d | as late as possible | emb engr 5 |
| 181 | 2.1.6.3 | develop filter | 15d | 2018-08-03 | 2018-08-24 | 180 |  | as late as possible | emb engr 5 |
| 182 | 2.1.6.4 | implement filter | 5d | 2018-08-28 | 2018-09-03 | 181 |  | as late as possible | emb engr 5 |

| ID | WBS | Task | Duration | Start | Finish | Predecessors | Total slack | Constraint | Resources |
| --- | --- | --- | --- | --- | --- | --- | --- | --- | --- |
| 183 | 2.1.7 | **piezometer** | 140d | 2018-02-08 | 2018-09-03 |  |  |  |  |
| 184 | 2.1.7.1 | provide initial performance metrics based on 2017 experience | 1d | 2018-02-08 | 2018-02-08 |  | 13600d |  |  |
| 185 | 2.1.7.2 | char-dev-dep | 20d | 2018-07-06 | 2018-08-02 |  | 10000d | as late as possible | emb engr 6 |
| 186 | 2.1.7.3 | develop filter | 10d | 2018-08-03 | 2018-08-16 | 185 |  | as late as possible | emb engr 6 |
| 187 | 2.1.7.4 | implement filter | 10d | 2018-08-17 | 2018-09-03 | 186 |  | as late as possible | emb engr 6 |
| 188 | 2.1.8 | **gateway datalogger** | 120d | 2018-02-08 | 2018-08-02 |  | 1700d |  |  |
| 189 | 2.1.8.1 | provide initial performance metrics based on 2017 experience | 1d | 2018-02-08 | 2018-02-08 |  | 13600d |  |  |
| 190 | 2.1.8.2 | char-dev-dep | 60d | 2018-05-10 | 2018-08-02 |  | 6000d | as late as possible | emb engr 7 |
| 191 | 2.1.9 | **router datalogger** | 140d | 2018-02-08 | 2018-09-03 |  |  |  |  |
| 192 | 2.1.9.1 | provide initial performance metrics based on 2017 experience | 1d | 2018-02-08 | 2018-02-08 |  | 13600d |  |  |
| 193 | 2.1.9.2 | char-dev-dep | 30d | 2018-07-20 | 2018-09-03 |  | 11000d | as late as possible | emb engr 7 |
| 194 | 2.1.10 | **sensor datalogger** | 48d | 2018-02-08 | 2018-04-20 |  | 9200d |  |  |
| 195 | 2.1.10.1 | provide initial performance metrics based on 2017 experience | 1d | 2018-02-08 | 2018-02-08 |  | 13600d |  |  |
| 196 | 2.1.10.2 | develop sensor datalogger feature 1( rtc, low-power, xbee interface, bluetooth interface) | 10d | 2018-02-08 | 2018-02-22 |  | 13000d |  |  |
| 197 | 2.1.10.3 | develop sensor datalogger feature 2( rtc, low-power, xbee interface, bluetooth interface) | 10d | 2018-02-08 | 2018-02-22 |  | 13000d |  |  |
| 198 | 2.1.10.4 | prepare manufacturing documents | 20d | 2018-02-08 | 2018-03-08 |  | 12000d |  |  |
| 199 | 2.1.10.5 | **manufacturing monitoring** | 48d | 2018-02-08 | 2018-04-20 |  | 9200d |  |  |
| 200 | 2.1.10.5.1 | develop functionality tests | 3d | 2018-02-08 | 2018-02-12 |  | 9200d |  |  |
| 201 | 2.1.10.5.2 | manufacture | 40d | 2018-02-13 | 2018-04-13 | 200 | 9200d |  |  |
| 202 | 2.1.10.5.3 | troubleshoot manufacturing issues | 40d | 2018-02-13 | 2018-04-13 | 200 | 9700d |  |  |
| 203 | 2.1.10.5.4 | evaluate sample boards | 5d | 2018-04-16 | 2018-04-20 | 201 | 9200d |  |  |
| 204 | 2.1.11 | **stand alone datalogger** | 120d | 2018-02-08 | 2018-08-02 |  | 1700d |  |  |
| 205 | 2.1.11.1 | provide initial performance metrics based on 2017 experience | 1d | 2018-02-08 | 2018-02-08 |  | 13600d |  |  |
| 206 | 2.1.11.2 | char-dev-dep | 30d | 2018-06-22 | 2018-08-02 |  | 9000d | as late as possible | emb engr 7 |

| ID | WBS | Task | Duration | Start | Finish | Predecessors | Total slack | Constraint | Resources |
| --- | --- | --- | --- | --- | --- | --- | --- | --- | --- |
| 207 | 2.2 | **SMS parsing system for new data structures** | 20d | 2018-08-03 | 2018-09-03 |  |  |  |  |
| 208 | 2.2.1 | develop sms parsing system | 20d | 2018-08-03 | 2018-09-03 | 190, 206 |  | as late as possible | emb engr 9 |
| 209 | 2.3 | **Data storage and management system** | 73d | 2018-05-16 | 2018-08-29 |  |  |  |  |
| 210 | 2.3.1 | develop new structure for storage and management | 20d | 2018-05-16 | 2018-06-13 |  | 6400d | as late as possible | sys ad 1 |
| 211 | 2.3.2 | develop automated backup | 10d | 2018-08-07 | 2018-08-20 | 210 | 3800d | as late as possible | sys ad 1 |
| 212 | 2.3.3 | recommend performance metrics | 5d | 2018-08-22 | 2018-08-29 | 211 |  | as late as possible | sys ad 1 |
| 213 | 2.3.4 | develop data access for risk assessment | 10d | 2018-06-14 | 2018-06-27 | 210 |  | as late as possible | sys ad 2 |
| 214 | 2.4 | **Data analysis system** | 140d? | 2018-02-08 | 2018-09-03 |  |  |  |  |
| 215 | 2.4.1 | **threshold scripts** | 1d | 2018-07-23 | 2018-07-23 |  |  |  |  |
| 216 | 2.4.1.1 | implement thresholds | 1d | 2018-07-23 | 2018-07-23 | 55, 63, 71, 79, 87, 95 |  | as late as possible | data scientist 7 |
| 217 | 2.4.2 | **visualization scripts** | 140d? | 2018-02-08 | 2018-09-03 |  |  |  |  |
| 218 | 2.4.2.1 | research data visualization concepts (inc. hazard concepts) | 10d | 2018-07-10 | 2018-07-23 |  | 10200d | as late as possible | data scientist 8 |
| 219 | 2.4.2.2 | develop new web charts | 30d | 2018-07-24 | 2018-09-03 | 216, 218 |  |  | full stack dev 1 |
| 220 | 2.4.2.3 | improvement of existing web charts | 1d? | 2018-09-03 | 2018-09-03 |  | 13900d | as late as possible | web dev 2 |
| 221 | 2.4.2.4 | improvement of webchart generation | 1d? | 2018-09-03 | 2018-09-03 |  | 13900d | as late as possible | web dev 2 |
| 222 | 2.4.2.5 | provide initial performance metrics based on 2017 experience | 1d | 2018-02-08 | 2018-02-08 |  | 13900d |  | full stack dev 1 |
| 223 | 2.4.3 | recommend performance metrics | 1d | 2018-09-03 | 2018-09-03 |  | 13900d | as late as possible | data scientist 7 |
| 224 | 2.4.4 | draft process profile (recomm to automation integration) | 2d | 2018-08-29 | 2018-08-30 |  | 13600d | as late as possible | data scientist 7 |
| 225 | 2.5 | **Dissemination system** | 140d? | 2018-02-08 | 2018-09-03 |  |  |  |  |
| 226 | 2.5.1 | **alert generation module** | 7d | 2018-08-23 | 2018-09-03 |  |  |  |  |
| 227 | 2.5.1.1 | create modularized infrastructure for different operational triggers | 5d | 2018-08-28 | 2018-09-03 |  | 13500d | as late as possible | programmer 1 |
| 228 | 2.5.1.2 | create "special cases" tables (e.g., Puguis) | 5d | 2018-08-23 | 2018-08-30 |  | 13300d | as late as possible | programmer 1 |
| 229 | 2.5.1.3 | implement alert protocol (trigger to alert) revisions | 2d | 2018-08-31 | 2018-09-03 | 138, 228 |  | as late as possible | programmer 1 |
| 230 | 2.5.1.4 | recommend performance metrics (in relation to automation) | 1d | 2018-09-03 | 2018-09-03 |  | 13900d | as late as possible | programmer 1 |
| 231 | 2.5.1.5 | draft process profile (recomm to automation integration) | 2d | 2018-08-29 | 2018-08-30 |  | 13600d | as late as possible | programmer 1 |

Notes:
- 209: fractional activity
- 214: each system should have a performance metrics document as its PI
- 219: for 6 new web charts developed under LRI
- 220: should include speed of generation of charts
- 221: fractional

| ID | WBS | Task | Duration | Start | Finish | Predecessors | Total slack | Constraint | Resources |
| --- | --- | --- | --- | --- | --- | --- | --- | --- | --- |
| 232 | 2.5.2 | **GSM module server** | 140d? | 2018-02-08 | 2018-09-03 |  |  |  |  |
| 233 | 2.5.2.1 | **develop new GSM module server features** | 15d | 2018-02-08 | 2018-03-01 |  | 12500d |  |  |
| 234 | 2.5.2.1.1 | develop power autonomy | 15d | 2018-02-08 | 2018-03-01 |  | 12500d |  | emb engr 8 |
| 235 | 2.5.2.1.2 | develop multiple gsm module hardware | 15d | 2018-02-08 | 2018-03-01 |  | 12500d |  | emb engr 8 |
| 236 | 2.5.2.2 | implement new feature requests | 1d? | 2018-02-08 | 2018-02-08 |  | 13900d |  | emb engr 8 |
| 237 | 2.5.2.3 | recommend performance metrics (in relation to automation) | 1d | 2018-09-03 | 2018-09-03 |  | 13900d | as late as possible | emb engr 8 |
| 238 | 2.5.2.4 | draft process profile (recomm to automation integration) | 2d | 2018-08-29 | 2018-08-30 |  | 13600d | as late as possible | emb engr 8 |
| 239 | 2.5.3 | **chatterbox** | 10d? | 2018-08-17 | 2018-09-03 |  |  |  |  |
| 240 | 2.5.3.1 | revise scripts for SMS generation and sending (automation?) | 10d | 2018-08-17 | 2018-09-03 |  | 13000d | as late as possible | web dev 3 |
| 241 | 2.5.3.2 | implement feature requests | 1d? | 2018-09-03 | 2018-09-03 |  | 13900d | as late as possible | web dev 3 |
| 242 | 2.5.3.3 | improve performance | 1d? | 2018-09-03 | 2018-09-03 |  | 13900d | as late as possible | web dev 3 |
| 243 | 2.5.3.4 | recommend performance metrics (in relation to automation) | 1d | 2018-09-03 | 2018-09-03 |  | 13900d | as late as possible | web dev 3 |
| 244 | 2.5.3.5 | draft process profile (recomm to automation integration) | 2d | 2018-08-29 | 2018-08-30 |  | 13600d | as late as possible | web dev 3 |
| 245 | 2.5.4 | **webcall** | 83d | 2018-05-03 | 2018-08-30 |  |  |  |  |
| 246 | 2.5.4.1 | acquire, implement hardware | 60d | 2018-05-03 | 2018-07-26 |  | 5500d | as late as possible | web dev 4 |
| 247 | 2.5.4.2 | develop/integrate software | 20d | 2018-07-27 | 2018-08-24 | 246 |  | as late as possible | web dev 4 |
| 248 | 2.5.4.3 | recommend performance metrics (in relation to automation) | 1d | 2018-08-28 | 2018-08-28 | 247 |  | as late as possible | web dev 4 |
| 249 | 2.5.4.4 | draft process profile (recomm to automation integration) | 2d | 2018-08-29 | 2018-08-30 | 248 |  | as late as possible | web dev 4 |
| 250 | 2.5.5 | **bulletin generator** | 140d? | 2018-02-08 | 2018-09-03 |  |  |  |  |
| 251 | 2.5.5.1 | revise scripts for bulletin generation and sending (automation?) | 5d | 2018-08-28 | 2018-09-03 |  | 13500d | as late as possible | web dev 5 |
| 252 | 2.5.5.2 | implement feature requests | 1d? | 2018-02-08 | 2018-02-08 |  | 13900d |  | web dev 5 |
| 253 | 2.5.5.3 | improve performance | 1d? | 2018-09-03 | 2018-09-03 |  | 13900d | as late as possible | web dev 5 |
| 254 | 2.5.5.4 | recommend performance metrics (in relation to automation) | 1d | 2018-09-03 | 2018-09-03 |  | 13900d | as late as possible | web dev 5 |
| 255 | 2.5.5.5 | draft process profile (recomm to automation integration) | 2d | 2018-08-29 | 2018-08-30 |  | 13600d | as late as possible | web dev 5 |

Notes:
- 236: Agile / Fractional
- 241: Fractional (Agile)
- 242: Agile
- 246: Acquisition of hardware will take some time
- 252: Agile (Fractional)
- 253: Agile (Fractional)

| ID | WBS | Task | Duration | Start | Finish | Predecessors | Total slack | Constraint | Resources |
| --- | --- | --- | --- | --- | --- | --- | --- | --- | --- |
| 256 | 2.6 | **Local Info system (ISD)** | 130d | 2018-02-23 | 2018-09-03 |  |  |  |  |
| 257 | 2.6.1 | consolidate recommendations into ict specifications | 10d | 2018-02-23 | 2018-03-08 |  | 1000d | as late as possible | analyst 1 |
| 258 | 2.6.2 | use case testing | 60d | 2018-06-07 | 2018-09-03 | 257 | 6000d | as late as possible | analyst 1 |
| 259 | 2.6.3 | develop local codes updating system | 20d | 2018-08-03 | 2018-09-03 | 257 | 10000d | as late as possible | programmer 2 |
| 260 | 2.6.4 | port ews-l modules | 120d | 2018-03-09 | 2018-09-03 | 257 |  | as late as possible | programmer 2 |
| 261 | 2.7 | **Automation integration system** | 2d? | 2018-08-31 | 2018-09-03 |  |  |  |  |
| 262 | 2.7.1 | automate recommended processes | 1d? | 2018-08-31 | 2018-08-31 | 224, 231, 238, 244, 249, 255 |  | as late as possible | programmer 3 |
| 263 | 2.7.2 | evaluate automation performance | 1d? | 2018-09-03 | 2018-09-03 | 262, 267 |  | as late as possible | MEAL officer 2 |
| 264 | 2.8 | **Performance monitoring system of central system** | 139d? | 2018-02-08 | 2018-08-31 |  | 100d |  |  |
| 265 | 2.8.1 | consolidate recommendations for performance metrics | 1d? | 2018-08-30 | 2018-08-30 | 142, 146, 159, 169, 174, 179, 184, 189, 192, 195, 205, 212 |  | as late as possible | MEAL officer 1 |
| 266 | 2.8.2 | develop performance targets | 1d? | 2018-02-08 | 2018-02-08 |  | 13900d |  |  |
| 267 | 2.8.3 | develop performance monitoring system | 1d? | 2018-08-31 | 2018-08-31 | 265 |  | as late as possible | programmer 4 |
| 268 | 2.8.4 | establish baseline | 1d? | 2018-02-08 | 2018-02-08 |  | 13900d |  |  |
| 269 | 2.9 | **Organized Local Early Warning Committee (LEWC)** | 1d? | 2018-09-03 | 2018-09-03 |  |  |  |  |
| 270 | 2.9.1 | **LEWC org structure and mission/vision (47 sites)** | 1d? | 2018-09-03 | 2018-09-03 |  |  |  |  |
| 271 | 2.9.1.1 | prepare modules | 1d? | 2018-09-03 | 2018-09-03 |  | 13900d | as late as possible | comm dev 1 |
| 272 | 2.9.1.2 | conduct training/ gather data | 1d? | 2018-09-03 | 2018-09-03 |  | 13900d | as late as possible | facilitator 1 |
| 273 | 2.9.2 | **Guidelines for community organizing (2 sites)** | 1d? | 2018-09-03 | 2018-09-03 |  |  |  |  |
| 274 | 2.9.2.1 | develop methods for community organizing | 1d? | 2018-09-03 | 2018-09-03 |  | 13900d | as late as possible | comm dev 2 |
| 275 | 2.9.2.2 | gather data (fieldwork) | 1d? | 2018-09-03 | 2018-09-03 |  | 13900d | as late as possible | facilitator 2 |
| 276 | 2.9.2.3 | recommend activities for community organizing | 1d? | 2018-09-03 | 2018-09-03 |  | 13900d | as late as possible | comm dev 2 |
| 277 | 2.9.3 | **develop guidelines for institutionalization of LEWC (2 sites)** | 1d? | 2018-09-03 | 2018-09-03 |  |  |  |  |
| 278 | 2.9.3.1 | develop methods for crafing guidelines | 1d? | 2018-09-03 | 2018-09-03 |  | 13900d | as late as possible | comm dev 3 |
| 279 | 2.9.3.2 | gather data (fieldwork) | 1d? | 2018-09-03 | 2018-09-03 |  | 13900d | as late as possible | facilitator 3 |
| 280 | 2.9.3.3 | develop guidelines for institutionalization of LEWC | 1d? | 2018-09-03 | 2018-09-03 |  | 13900d | as late as possible | comm dev 3 |

Notes:
- 260: Define duration and number of resources after the ICT report
- 267: PI: should be able to produce a report, either on-demand or periodically
- 270: (focus sites)

| ID | WBS | Task | Duration | Start | Finish | Predecessors | Total slack | Constraint | Resources |
| --- | --- | --- | --- | --- | --- | --- | --- | --- | --- |
| 281 | 2.10 | **Guidelines for developing contingency plans for DSL (barangay level)** | 3d? | 2018-08-30 | 2018-09-03 |  |  |  |  |
| 282 | 2.10.1 | review literature on contingency plans | 1d? | 2018-08-30 | 2018-08-30 |  | 13700d | as late as possible | social scientist 3 |
| 283 | 2.10.2 | draft guidelines for contingency plans | 1d? | 2018-08-31 | 2018-08-31 | 282 |  | as late as possible | social scientist 3 |
| 284 | 2.10.3 | approve guidelines for contingency plans | 1d? | 2018-09-03 | 2018-09-03 | 283 |  | as late as possible | social scientist 3 |
| 285 | 2.11 | **Operations manual** | 1d? | 2018-09-03 | 2018-09-03 |  |  |  |  |
| 286 | 2.11.1 | update EWS operations manual based on protocol (to MEAL) | 1d? | 2018-09-03 | 2018-09-03 |  | 13900d | as late as possible | DRRS 2 |
| 288 | 3 | **Early warning information** | 2d? | 2018-08-31 | 2018-09-03 |  |  |  |  |
| 289 | 3.1 | generate, review, and release EWI | 1d? | 2018-09-03 | 2018-09-03 |  | 13900d | as late as possible | monitoringPersonnel40+ |
| 290 | 3.2 | **EWI support** | 2d? | 2018-08-31 | 2018-09-03 |  |  |  |  |
| 291 | 3.2.1 | **operational systems** | 1d? | 2018-09-03 | 2018-09-03 |  |  |  |  |
| 292 | 3.2.1.1 | **sensors and dataloggers** | 1d? | 2018-09-03 | 2018-09-03 |  |  |  |  |
| 293 | 3.2.1.1.1 | replace defective sensors and loggers | 1d? | 2018-09-03 | 2018-09-03 |  | 13900d | as late as possible | eletech 1 |
| 294 | 3.2.1.1.2 | monitor sensor and datalogger health status | 1d? | 2018-09-03 | 2018-09-03 |  | 13900d | as late as possible | emb engr 8 |
| 295 | 3.2.1.1.3 | track maintenance activities | 1d? | 2018-09-03 | 2018-09-03 |  | 13900d | as late as possible | emb engr 8 |
| 296 | 3.2.1.1.4 | manage inventory | 1d? | 2018-09-03 | 2018-09-03 |  | 13900d | as late as possible | eletech 2 |
| 297 | 3.2.1.1.5 | track PLAA events | 1d? | 2018-09-03 | 2018-09-03 |  | 13900d | as late as possible | emb engr 8 |
| 298 | 3.2.1.1.6 | track sensor events | 1d? | 2018-09-03 | 2018-09-03 |  | 13900d | as late as possible | emb engr 8 |
| 299 | 3.2.1.1.7 | field-based maintenance | 1d? | 2018-09-03 | 2018-09-03 |  | 13900d | as late as possible | eletech 3 |
| 300 | 3.2.1.2 | **central server (software)** | 1d? | 2018-09-03 | 2018-09-03 |  |  |  |  |
| 301 | 3.2.1.2.1 | maintain data gathering system | 1d? | 2018-09-03 | 2018-09-03 |  | 13900d | as late as possible | emb engr 9 |
| 302 | 3.2.1.2.2 | maintain data storage and management system | 1d? | 2018-09-03 | 2018-09-03 |  | 13900d | as late as possible | emb engr 9 |
| 303 | 3.2.1.2.3 | maintain data analysis system | 1d? | 2018-09-03 | 2018-09-03 |  | 13900d | as late as possible | programmer 5 |
| 304 | 3.2.1.2.4 | maintain info dissemination system | 1d? | 2018-09-03 | 2018-09-03 |  | 13900d | as late as possible | emb engr 9 |
| 305 | 3.2.1.2.5 | train staff for debugging | 0.5d? | 2018-09-03 | 2018-09-03 |  | 13950d | as late as possible | emb engr 9; programmer 5 |
| 306 | 3.2.1.2.6 | produce code and documentation standards | 1d? | 2018-09-03 | 2018-09-03 |  | 13900d | as late as possible | programmer 5 |

Notes:
- 293: includes drilling and deployment; (may be include also procurement of drilling services?)
- 305: for purpose of pool of debuggers

| ID | WBS | Task | Duration | Start | Finish | Predecessors | Total slack | Constraint | Resources |
| --- | --- | --- | --- | --- | --- | --- | --- | --- | --- |
| 307 | 3.2.2 | **updated database** | 1d? | 2018-09-03 | 2018-09-03 |  |  |  |  |
| 308 | 3.2.2.1 | maintain tables | 1d? | 2018-09-03 | 2018-09-03 |  | 13900d | as late as possible | emb engr 9 |
| 309 | 3.2.3 | **parsed SMS** | 1d? | 2018-09-03 | 2018-09-03 |  |  |  |  |
| 310 | 3.2.3.1 | maintain SMS parsing | 1d? | 2018-09-03 | 2018-09-03 |  | 13900d | as late as possible | emb engr 9 |
| 311 | 3.2.4 | **capable personnel for monitoring and early warning** | 2d? | 2018-08-31 | 2018-09-03 |  |  |  |  |
| 312 | 3.2.4.1 | **develop training materials** | 1d? | 2018-08-31 | 2018-08-31 |  |  |  |  |
| 313 | 3.2.4.1.1 | hazard monitoring | 1d? | 2018-08-31 | 2018-08-31 |  | 13800d | as late as possible | training specialist 1 |
| 314 | 3.2.4.1.2 | analysis and validation | 1d? | 2018-08-31 | 2018-08-31 |  | 13800d | as late as possible | training specialist 1 |
| 315 | 3.2.4.1.3 | sensor maintenance | 1d? | 2018-08-31 | 2018-08-31 |  | 13800d | as late as possible | training specialist 1 |
| 316 | 3.2.4.1.4 | communications protocol | 1d? | 2018-08-31 | 2018-08-31 |  | 13800d | as late as possible | training specialist 1 |
| 317 | 3.2.4.2 | **conduct EWS protocol trainings (internal)** | 1d? | 2018-09-03 | 2018-09-03 | 312 |  |  |  |
| 318 | 3.2.4.2.1 | hazard monitoring | 1d? | 2018-09-03 | 2018-09-03 |  |  | as late as possible | geotech 1 |
| 319 | 3.2.4.2.2 | analysis and validation | 1d? | 2018-09-03 | 2018-09-03 |  |  | as late as possible | data scientist 7 |
| 320 | 3.2.4.2.3 | sensor maintenance | 1d? | 2018-09-03 | 2018-09-03 |  |  | as late as possible | eletech 5 |
| 321 | 3.2.4.2.4 | communications protocol | 1d? | 2018-09-03 | 2018-09-03 |  |  | as late as possible | DRRS 2 |
| 322 | 3.2.4.3 | **conduct EWS protocol trainings (external)** | 1d? | 2018-09-03 | 2018-09-03 | 312 |  |  |  |
| 323 | 3.2.4.3.1 | hazard monitoring | 1d? | 2018-09-03 | 2018-09-03 |  |  | as late as possible | training specialist 2 |
| 324 | 3.2.4.3.2 | analysis and validation | 1d? | 2018-09-03 | 2018-09-03 |  |  | as late as possible | training specialist 2 |
| 325 | 3.2.4.3.3 | sensor maintenance | 1d? | 2018-09-03 | 2018-09-03 |  |  | as late as possible | training specialist 2 |
| 326 | 3.2.4.3.4 | communications protocol | 1d? | 2018-09-03 | 2018-09-03 |  |  | as late as possible | training specialist 2 |
| 327 | 4 | **Strategic communications** | 3d? | 2018-08-30 | 2018-09-03 |  |  |  |  |
| 328 | 4.1 | research stakeholder info needs | 1d? | 2018-08-30 | 2018-08-30 |  | 13700d | as late as possible | comm res 1 |
| 329 | 4.2 | research policy process | 1d? | 2018-09-03 | 2018-09-03 |  | 13900d | as late as possible | comm res 2 |
| 330 | 4.3 | develop strategic comm plan | 1d? | 2018-08-31 | 2018-08-31 | 328 |  | as late as possible | comm res 1 |

| ID | WBS | Task | Duration | Start | Finish | Predecessors | Total slack | Constraint | Resources |
| --- | --- | --- | --- | --- | --- | --- | --- | --- | --- |
| 331 | 4.4 | **develop communication materials** | 1d? | 2018-09-03 | 2018-09-03 | 330 |  |  |  |
| 332 | 4.4.1 | **website** | 1d? | 2018-09-03 | 2018-09-03 |  |  |  |  |
| 333 | 4.4.1.1 | develop website content | 1d? | 2018-09-03 | 2018-09-03 |  |  | as late as possible | comm res 1 |
| 334 | 4.4.1.2 | design website | 1d? | 2018-09-03 | 2018-09-03 |  |  | as late as possible | comm res 1 |
| 335 | 4.4.1.3 | develop content management system | 1d? | 2018-09-03 | 2018-09-03 |  |  | as late as possible | web dev 1 |
| 336 | 4.5 | develop non-website communications | 1d? | 2018-09-03 | 2018-09-03 |  | 13900d | as late as possible | comm res 2 |
| 337 | 5 | **MEAL system** | 140d? | 2018-02-08 | 2018-09-03 |  |  |  |  |
| 338 | 5.1 | develop MEAL framework | 2d | 2018-08-22 | 2018-08-23 |  | 13200d | as late as possible | MEAL expert; MEAL officer 1; MEAL officer 2; MEAL officer 3; MEAL officer 4; MEAL officer 5; MEAL officer 6 |
| 339 | 5.2 | develop MEAL plan | 3d | 2018-08-24 | 2018-08-29 | 338 |  | as late as possible | MEAL expert; MEAL officer 1; MEAL officer 2; MEAL officer 3; MEAL officer 4; MEAL officer 5; MEAL officer 6 |
| 340 | 5.3 | **monitoring mechanisms** | 140d? | 2018-02-08 | 2018-09-03 |  |  |  |  |
| 341 | 5.3.1 | **standard documentation and storage** | 2d? | 2018-08-31 | 2018-09-03 |  |  |  |  |
| 342 | 5.3.1.1 | design documentation templates | 1d? | 2018-08-31 | 2018-08-31 | 339 | 100d | as late as possible | MEAL officer 6 |
| 343 | 5.3.1.2 | design repository system | 1d? | 2018-09-03 | 2018-09-03 | 342 |  | as late as possible | programmer 1 |
| 344 | 5.3.2 | **PLAA** | 1d | 2018-09-03 | 2018-09-03 |  |  |  |  |
| 345 | 5.3.2.1 | review current PLAA vis-a-vis MEAL plan | 0.5d | 2018-09-03 | 2018-09-03 | 339 | 200d | as late as possible | MEAL officer 1; MEAL staff 1; MEAL staff 2 |
| 346 | 5.3.2.2 | revise PLAA guidelines | 0.5d | 2018-09-03 | 2018-09-03 | 345 |  | as late as possible | MEAL officer 1; MEAL staff 1; MEAL staff 2 |
| 347 | 5.3.3 | **EWS-QA** | 140d | 2018-02-08 | 2018-09-03 |  |  |  |  |
| 348 | 5.3.3.1 | review current EWS-QA vis-a-vis MEAL plan | 0.5d | 2018-09-03 | 2018-09-03 | 339 | 200d | as late as possible | MEAL officer 2; MEAL staff 3; MEAL staff 4 |
| 349 | 5.3.3.2 | revise EWS-QA guidelines | 0.5d | 2018-09-03 | 2018-09-03 | 348 |  | as late as possible | MEAL officer 2; MEAL staff 3; MEAL staff 4 |
| 350 | 5.3.3.3 | revise tools for data gathering | 3d | 2018-02-08 | 2018-02-12 |  | 13700d |  | programmer 2 |
| 351 | 5.3.4 | **outcome-impact** | 1d | 2018-09-03 | 2018-09-03 |  |  |  |  |
| 352 | 5.3.4.1 | review outcome-impact vis-a-vis MEAL plan | 0.5d | 2018-09-03 | 2018-09-03 | 339 | 200d | as late as possible | MEAL officer 3; MEAL staff 5; MEAL staff 6 |
| 353 | 5.3.4.2 | revise outcome-impact | 0.5d | 2018-09-03 | 2018-09-03 | 352 |  | as late as possible | MEAL officer 3; MEAL staff 5; MEAL staff 6 |
| 354 | 5.3.5 | **administrative process** | 1d | 2018-09-03 | 2018-09-03 |  |  |  |  |
| 355 | 5.3.5.1 | review admin process trackers vis-a-vis MEAL plan | 0.5d | 2018-09-03 | 2018-09-03 | 339 | 200d | as late as possible | MEAL officer 4; MEAL staff 7; MEAL staff 8 |
| 356 | 5.3.5.2 | revise admin process trackers | 0.5d | 2018-09-03 | 2018-09-03 | 355 |  | as late as possible | MEAL officer 4; MEAL staff 7; MEAL staff 8 |

| ID | WBS | Task | Duration | Start | Finish | Predecessors | Total slack | Constraint | Resources |
| --- | --- | --- | --- | --- | --- | --- | --- | --- | --- |
| 357 | 5.3.6 | **project output** | 3d | 2018-08-30 | 2018-09-03 |  |  |  |  |
| 358 | 5.3.6.1 | develop team output tracker | 1d | 2018-08-30 | 2018-08-30 | 339 |  | as late as possible | MEAL officer 5; MEAL staff 10; MEAL staff 9 |
| 359 | 5.3.6.2 | develop individual output tracker | 1d | 2018-08-31 | 2018-08-31 | 339, 358 |  | as late as possible | MEAL officer 5; MEAL staff 10; MEAL staff 9 |
| 360 | 5.3.6.3 | develop individual capacity tracker | 1d | 2018-09-03 | 2018-09-03 | 339, 359 |  | as late as possible | MEAL officer 5; MEAL staff 10; MEAL staff 9 |
| 361 | 5.3.7 | **stakeholder concerns** | 0.5d | 2018-09-03 | 2018-09-03 |  |  |  |  |
| 362 | 5.3.7.1 | develop stakeholder concerns tracker | 0.5d | 2018-09-03 | 2018-09-03 | 339 | 250d | as late as possible | MEAL officer 3; MEAL staff 5; MEAL staff 6 |
| 365 | 5.4 | **data gathering** | 140d? | 2018-02-08 | 2018-09-03 |  |  |  |  |
| 366 | 5.4.1 | EWS-QA | 1d? | 2018-09-03 | 2018-09-03 |  | 13900d | as late as possible | MEAL officer 1 |
| 367 | 5.4.2 | PLAA (per site) | 35d | 2018-07-13 | 2018-09-03 |  | 10500d | as late as possible | MEAL officer 2 |
| 368 | 5.4.3 | outcome-iimpact | 1d? | 2018-09-03 | 2018-09-03 |  | 13900d | as late as possible | MEAL officer 3 |
| 369 | 5.4.4 | project output | 1d? | 2018-09-03 | 2018-09-03 |  | 13900d | as late as possible | MEAL officer 5 |
| 370 | 5.4.5 | stakeholder concerns | 1d? | 2018-09-03 | 2018-09-03 |  | 13900d | as late as possible | MEAL officer 5 |
| 371 | 5.4.6 | admin process | 1d? | 2018-02-08 | 2018-02-08 |  | 13900d |  | MEAL officer 4 |
| 372 | 5.5 | evaluate | 1d? | 2018-09-03 | 2018-09-03 |  | 13900d | as late as possible |  |
| 373 | 5.6 | provide recomms | 1d? | 2018-09-03 | 2018-09-03 |  | 13900d | as late as possible |  |
| 376 | 5.7 | **MEAL implem** | 3d? | 2018-08-30 | 2018-09-03 |  |  |  |  |
| 377 | 5.7.1 | **EWS-QA** | 3d? | 2018-08-30 | 2018-09-03 | 339 |  |  |  |
| 378 | 5.7.1.1 | **activity series 1** | 3d? | 2018-08-30 | 2018-09-03 |  |  |  |  |
| 379 | 5.7.1.1.1 | gather data | 1d? | 2018-08-30 | 2018-08-30 |  |  |  |  |
| 380 | 5.7.1.1.2 | analyze, evaluate data | 1d? | 2018-08-31 | 2018-08-31 | 379 |  |  |  |
| 381 | 5.7.1.1.3 | provide recommendations | 1d? | 2018-09-03 | 2018-09-03 | 380 |  |  |  |
| 382 | 5.7.2 | **PLAA** | 1d? | 2018-08-30 | 2018-08-30 | 339 | 200d |  |  |
| 383 | 5.7.2.1 | **activity series 1** | 1d? | 2018-08-30 | 2018-08-30 |  | 200d |  |  |
| 384 | 5.7.2.1.1 | gather data | 1d? | 2018-08-30 | 2018-08-30 |  | 200d |  |  |
| 385 | 5.7.2.1.2 | analyze, evaluate data | 1d? | 2018-08-30 | 2018-08-30 |  | 200d |  |  |
| 386 | 5.7.2.1.3 | provide recommendations | 1d? | 2018-08-30 | 2018-08-30 |  | 200d |  |  |

Notes:
- 367: fieldworks + pre-field activities

| ID | WBS | Task | Duration | Start | Finish | Predecessors | Total slack |
| --- | --- | --- | --- | --- | --- | --- | --- |
| 387 | 5.7.3 | **outcome-impact** | 1d? | 2018-08-30 | 2018-08-30 | 339 | 200d |
| 388 | 5.7.3.1 | **activity series 1** | 1d? | 2018-08-30 | 2018-08-30 |  | 200d |
| 389 | 5.7.3.1.1 | gather data | 1d? | 2018-08-30 | 2018-08-30 |  | 200d |
| 390 | 5.7.3.1.2 | analyze, evaluate data | 1d? | 2018-08-30 | 2018-08-30 |  | 200d |
| 391 | 5.7.3.1.3 | provide recommendations | 1d? | 2018-08-30 | 2018-08-30 |  | 200d |
| 392 | 5.7.4 | **project output** | 1d? | 2018-08-30 | 2018-08-30 | 339 | 200d |
| 393 | 5.7.4.1 | **activity series 1** | 1d? | 2018-08-30 | 2018-08-30 |  | 200d |
| 394 | 5.7.4.1.1 | gather data | 1d? | 2018-08-30 | 2018-08-30 |  | 200d |
| 395 | 5.7.4.1.2 | analyze, evaluate data | 1d? | 2018-08-30 | 2018-08-30 |  | 200d |
| 396 | 5.7.4.1.3 | provide recommendations | 1d? | 2018-08-30 | 2018-08-30 |  | 200d |
| 397 | 5.7.5 | **stakeholder concerns** | 1d? | 2018-08-30 | 2018-08-30 | 339 | 200d |
| 398 | 5.7.5.1 | **activity series 1** | 1d? | 2018-08-30 | 2018-08-30 |  | 200d |
| 399 | 5.7.5.1.1 | gather data | 1d? | 2018-08-30 | 2018-08-30 |  | 200d |
| 400 | 5.7.5.1.2 | analyze, evaluate data | 1d? | 2018-08-30 | 2018-08-30 |  | 200d |
| 401 | 5.7.5.1.3 | provide recommendations | 1d? | 2018-08-30 | 2018-08-30 |  | 200d |
| 402 | 5.7.6 | **admin process** | 1d? | 2018-08-30 | 2018-08-30 | 339 | 200d |
| 403 | 5.7.6.1 | **activity series 1** | 1d? | 2018-08-30 | 2018-08-30 |  | 200d |
| 404 | 5.7.6.1.1 | gather data | 1d? | 2018-08-30 | 2018-08-30 |  | 200d |
| 405 | 5.7.6.1.2 | analyze, evaluate data | 1d? | 2018-08-30 | 2018-08-30 |  | 200d |
| 406 | 5.7.6.1.3 | provide recommendations | 1d? | 2018-08-30 | 2018-08-30 |  | 200d |
